# v1.6.5版本

Schedule from MS Project, 2021-11-10 to 2021-11-23.

## Calendars

- 标准: Mon-Fri 08:00-12:00, 13:00-17:00; Sat-Sun off.

## Resources

| Resource |
| --- |
| 吴玉彩 |
| 李鹏跃 |
| 袁朝祥 |
| 高丽萍 |
| 赵冬冬 |
| 刘明亮 |
| 于周鹤 |
| 孙晨凯 |
| 邵荣强 |
| 边峥 |

## Schedule

| ID | WBS | Task | Duration | Start | Finish | Predecessors | Total slack | Free slack | Constraint | Resources | Work |
| --- | --- | --- | --- | --- | --- | --- | --- | --- | --- | --- | --- |
| 1 | 1 | **v1.6.4_bug修复** | 9d | 2021-11-10 | 2021-11-22 |  | 1d |  |  |  | 216h |
| 2 | 1.1 | 本地IP地址判断测试 | 2d | 2021-11-10 | 2021-11-11 |  | 8d |  |  | 吴玉彩 | 16h |
| 3 | 1.2 | 初始质押账户奖励分配过高 | 4d | 2021-11-10 | 2021-11-15 |  | 1d | 0d |  | 李鹏跃 | 32h |
| 4 | 1.3 | 快速同步调整和测试 | 5d | 2021-11-16 | 2021-11-22 | 3, 6 | 1d |  |  | 李鹏跃; 吴玉彩; 袁朝祥 | 120h |
| 5 | 1.4 | NTP时间校验 | 2d | 2021-11-10 | 2021-11-11 |  | 1d | 0d |  | 袁朝祥 | 16h |
| 6 | 1.5 | 根据config计算线程 | 2d | 2021-11-12 | 2021-11-15 | 5 | 1d | 0d |  | 边峥; 袁朝祥 | 32h |
| 7 | 2 | **禁止双花交易** | 10d? | 2021-11-10 | 2021-11-23 |  | 0d |  |  |  | 880h |
| 8 | 2.1 | **公网节点给与子网节点全网最高节点** | 4d | 2021-11-10 | 2021-11-15 |  | 0d |  |  | 刘明亮; 高丽萍 | 128h |
| 9 | 2.1.1 | 设计 | 2d | 2021-11-10 | 2021-11-11 |  | 0d |  |  | 高丽萍; 刘明亮 | 32h |
| 10 | 2.1.2 | 编码 | 2d | 2021-11-12 | 2021-11-15 | 9 | 0d |  |  | 高丽萍; 刘明亮 | 32h |
| 11 | 2.2 | **发起交易调整** | 5d | 2021-11-16 | 2021-11-22 | 10 | 0d |  |  | 刘明亮 | 80h |
| 12 | 2.2.1 | 设计 | 2d | 2021-11-16 | 2021-11-17 | 10 | 0d |  | start no earlier than 2021-11-10 | 刘明亮 | 16h |
| 13 | 2.2.2 | 编码 | 3d | 2021-11-18 | 2021-11-22 | 12 | 0d |  | finish no earlier than 2021-11-19 | 刘明亮 | 24h |
| 14 | 2.3 | **修改区块和交易体** | 7d | 2021-11-10 | 2021-11-18 |  | 0d |  |  | 赵冬冬 | 112h |
| 15 | 2.3.1 | 设计 | 3d | 2021-11-10 | 2021-11-12 |  | 0d |  |  | 赵冬冬 | 24h |
| 16 | 2.3.2 | 编码 | 4d | 2021-11-15 | 2021-11-18 | 15 | 0d |  |  | 赵冬冬 | 32h |
| 17 | 2.4 | **单笔交易vin最多不能超过1000个** | 2d | 2021-11-19 | 2021-11-22 | 16 | 0d |  |  | 赵冬冬 | 32h |
| 18 | 2.4.1 | 设计 | 1d | 2021-11-19 | 2021-11-19 | 16 | 0d |  |  | 赵冬冬 | 8h |
| 19 | 2.4.2 | 编码 | 1d | 2021-11-22 | 2021-11-22 | 18 | 0d |  |  | 赵冬冬 | 8h |
| 20 | 2.5 | **区块以及区块内交易的校验检查** | 3d | 2021-11-10 | 2021-11-12 |  | 0d |  |  | 邵荣强 | 48h |
| 21 | 2.5.1 | 设计 | 1d | 2021-11-10 | 2021-11-10 |  | 0d |  |  | 邵荣强 | 8h |
| 22 | 2.5.2 | 编码 | 2d | 2021-11-11 | 2021-11-12 | 21 | 0d |  |  | 邵荣强 | 16h |
| 23 | 2.6 | **区块加块逻辑校验检查** | 3d | 2021-11-15 | 2021-11-17 | 22 | 0d |  |  | 邵荣强 | 48h |
| 24 | 2.6.1 | 设计 | 1d | 2021-11-15 | 2021-11-15 | 22 | 0d |  |  | 邵荣强 | 8h |
| 25 | 2.6.2 | 编码 | 2d | 2021-11-16 | 2021-11-17 | 24 | 0d |  |  | 邵荣强 | 16h |

Notes:
- 2: 开发：于周鹤
- 3: 开发：边峥
- 4: 开发：邵荣强
- 5: 开发：孙晨凯
- 8: 设计一种计算全网最高节点的算法，保证速度和效率要求
- 11: 发起交易第一个为公网签名，其他签名节点不能为第一个公网节点 / 公网代发时，发起交易的第一个公网节点不能为自身公网节点 / 可用公网节点数量不足1个时，交易无法发起 / 可用公网节点数量不足共识个数时，交易路径为可用公网节点数量
- 14: 版本更新为1 / 区块和交易体extra中增加签名费和打包费字段 / ip字段修改identity / 区块信息中不包含交易类型 / 区块结构 COwnerAddr 可去除 / 交易结构 txOwner 修改为repeated/ 交易结构 添加交易类型和共识数 / 交易结构 CTxprevout 中n要填充 / 交易结构中 n需要去除 / 交易结构 txOwner修改名称 / 交易类型中增加手续费和奖励类型，去除scripsig定义 / extra 中去除onlinetime，AwardTotal SignSum addr 等 / 交易类型中增加 GENESIS 类型

| ID | WBS | Task | Duration | Start | Finish | Predecessors | Total slack | Resources | Work |
| --- | --- | --- | --- | --- | --- | --- | --- | --- | --- |
| 26 | 2.7 | **奖励计算调整** | 3d | 2021-11-18 | 2021-11-22 | 25 | 0d | 邵荣强 | 48h |
| 27 | 2.7.1 | 设计 | 1d | 2021-11-18 | 2021-11-18 | 25 | 0d | 邵荣强 | 8h |
| 28 | 2.7.2 | 编码 | 2d | 2021-11-19 | 2021-11-22 | 27 | 0d | 邵荣强 | 16h |
| 29 | 2.8 | **公网peernode调整** | 5d | 2021-11-10 | 2021-11-16 |  | 0d | 孙晨凯; 于周鹤 | 160h |
| 30 | 2.8.1 | 设计 | 2d | 2021-11-10 | 2021-11-11 |  | 0d | 孙晨凯; 于周鹤 | 32h |
| 31 | 2.8.2 | 编码 | 3d | 2021-11-12 | 2021-11-16 | 30 | 0d | 孙晨凯; 于周鹤 | 48h |
| 32 | 2.9 | **兼容性校验** | 4d | 2021-11-17 | 2021-11-22 | 31 | 0d | 孙晨凯; 于周鹤 | 128h |
| 33 | 2.9.1 | 设计 | 2d | 2021-11-17 | 2021-11-18 | 31 | 0d | 孙晨凯; 于周鹤 | 32h |
| 34 | 2.9.2 | 编码 | 2d | 2021-11-19 | 2021-11-22 | 33 | 0d | 孙晨凯; 于周鹤 | 32h |
| 35 | 2.10 | 暂时禁用黑名单机制 | 2d | 2021-11-16 | 2021-11-17 | 10 | 0d | 高丽萍 | 16h |
| 36 | 2.11 | 测试工具类 | 3d | 2021-11-18 | 2021-11-22 | 35 | 0d | 高丽萍 | 24h |
| 37 | 2.12 | 合并代码 | 1d? | 2021-11-23 | 2021-11-23 | 8, 11, 14, 17, 20, 23, 26, 29, 32, 35, 36 | 0d | 边峥; 高丽萍; 刘明亮; 邵荣强; 孙晨凯; 于周鹤; 赵冬冬 | 56h |

Notes:
- 26: 输出为0的签名账号，签名次数仅统计，但不进入奖励计算
- 29: Node id 内存储base58地址，以base58地址作为key / 新节点注册时如果已存在，则拒绝注册 / 节点id校验可能需要修改 / 考虑注册时发送公钥和私钥签名信息
